Schedule from MS Project, 2011-01-13 to 2012-01-19, A marks actual dates.

## Calendars

- Standard: Mon-Fri 08:00-12:00, 13:00-17:00; Sat-Sun off. Exceptions (off unless hours are given): 2011-05-30, 2011-07-04, 2011-09-05.

## Resources

| Resource |
| --- |
| Prasad |
| Dan |
| Vijay |
| Xiaoling |
| Aynur |
| Greg |

## Schedule

| ID | WBS | Task | Type | Duration | Start | Finish | Predecessors | Complete | Total slack | Free slack | Constraint | Resources | Work | Actual work |
| --- | --- | --- | --- | --- | --- | --- | --- | --- | --- | --- | --- | --- | --- | --- |
| 3 | 1 | **SDK 4.2.3** |  | 50.7d | 2011-03-15 A | 2011-05-24 A |  | 100% |  |  |  |  | 392h | 392h |
| 4 | 1.1 | GF 30729 Provide option to generate JUnit Tests for Logical Model Domain classes [already done] | milestone | 0d | 2011-03-15 A | 2011-03-15 A |  | 100% |  |  | start no earlier than 2011-03-15 |  |  |  |
| 5 | 1.2 | GF 30749 Third-Party Jars within the Code Generation Process |  | 5d | 2011-03-15 A | 2011-03-21 A |  | 100% |  |  | start no earlier than 2011-03-15 | Dan [75%] | 30h | 30h |
| 6 | 1.3 | GF 30753 Generation of the "not-null" Attribute with the "property" Element Node (not-null constraints) |  | 3d | 2011-03-30 A | 2011-04-01 A |  | 100% |  |  | start no earlier than 2011-03-30 | Vijay | 24h | 24h |
| 7 | 1.4 | GF 30748 Bi-directional self-associations |  | 5d | 2011-04-04 A | 2011-04-08 A |  | 100% |  |  | start no earlier than 2011-04-04 | Vijay | 40h | 40h |
| 8 | 1.5 | **GF 30510 Support (code generation) for interfaces** |  | 9d | 2011-03-30 A | 2011-04-11 A |  | 100% |  |  |  |  | 72h | 72h |
| 9 | 1.5.1 | Design |  | 2d | 2011-03-30 A | 2011-03-31 A |  | 100% |  |  | start no earlier than 2011-03-30 | Prasad | 16h | 16h |
| 10 | 1.5.2 | XMI Handler |  | 3d | 2011-04-01 A | 2011-04-05 A | 9 | 100% |  |  |  | Prasad | 24h | 24h |
| 11 | 1.5.3 | Code generation |  | 3d | 2011-04-06 A | 2011-04-08 A | 10 | 100% |  |  |  | Prasad | 24h | 24h |
| 12 | 1.5.4 | Test |  | 1d | 2011-04-11 A | 2011-04-11 A | 11 | 100% |  |  |  | Prasad | 8h | 8h |
| 13 | 1.6 | Dev testing and documentation |  | 4d | 2011-04-12 A | 2011-04-15 A | 4, 5, 6, 7, 12 | 100% |  |  |  | Prasad | 32h | 32h |
| 14 | 1.7 | Ivy support (XMI handler) |  | 2d | 2011-04-18 A | 2011-04-19 A | 13 | 100% |  |  |  | Prasad [25%] | 4h | 4h |
| 15 | 1.8 | QA test plan |  | 3d | 2011-04-14 A | 2011-04-18 A | 13FF | 100% |  |  | must start on 2011-04-14 | Xiaoling | 24h | 24h |
| 16 | 1.9 | QA |  | 9d | 2011-04-20 A | 2011-05-02 A | 14, 15 | 100% |  |  |  | Xiaoling | 72h | 72h |
| 17 | 1.10 | QA support |  | 7d | 2011-04-20 A | 2011-04-28 A | 16SS | 100% |  |  |  | Prasad [25%] | 14h | 14h |
| 18 | 1.11 | Optional QA for 30508, 30510, 30511, 30524 |  | 10d | 2011-05-09 A | 2011-05-24 A | 16 | 100% |  |  | start no earlier than 2011-05-09 | Xiaoling | 80h | 80h |
| 21 | 2 | **SDK 4.2.3 alternate database testing** |  | 31d? | 2011-06-08 | 2011-07-21 |  |  | 129d |  |  |  | 224h |  |
| 22 | 2.1 | Dev-supplied JUnits on Oracle |  | 2d | 2011-06-13 | 2011-06-14 |  |  | 132d | 0d | start no earlier than 2011-06-13 | Xiaoling | 16h |  |
| 23 | 2.2 | Smoke-test on Oracle |  | 2d | 2011-06-15 | 2011-06-16 | 22 |  | 142d | 0d |  | Xiaoling | 16h |  |
| 24 | 2.3 | Postgres installation issues |  | 5d? | 2011-06-08 | 2011-06-14 |  |  | 145d | 0d | start no earlier than 2011-06-08 |  |  |  |
| 25 | 2.4 | Dev-supplied JUnits on Postgres |  | 2d | 2011-06-17 | 2011-06-20 | 24, 23 |  | 132d | 0d |  | Xiaoling | 16h |  |
| 26 | 2.5 | Smoke-test on Postgres |  | 2d | 2011-06-21 | 2011-06-22 | 25 |  | 142d | 0d |  | Xiaoling | 16h |  |
| 27 | 2.6 | (Full regression on Oracle) [unlikely] |  | 10d? | 2011-06-23 | 2011-07-07 | 26 |  | 132d | 0d |  | Xiaoling | 80h |  |
| 28 | 2.7 | (Full regression on Postgres) [unlikely] |  | 10d? | 2011-07-08 | 2011-07-21 | 27 |  | 132d |  |  | Xiaoling | 80h |  |

| ID | WBS | Task | Type | Duration | Start | Finish | Predecessors | Complete | Remaining | Total slack | Constraint | Resources | Work | Actual work |
| --- | --- | --- | --- | --- | --- | --- | --- | --- | --- | --- | --- | --- | --- | --- |
| 31 | 3 | **GF 31030 - CSM/UPT patch for EMMES (UPT-Tomcat support)** |  | 42d? | 2011-04-21 A | 2011-06-20 |  | 85% | 6.22d? | 151d |  |  | 149.46h | 141.46h |
| 32 | 3.1 | Installation instructions for Tomcat |  | 3d | 2011-04-21 A | 2011-05-04 A |  | 100% |  |  | start no earlier than 2011-04-21 | Prasad [75%] | 17.46h | 17.46h |
| 33 | 3.2 | UPT fixes |  | 6d | 2011-04-25 A | 2011-05-02 A |  | 100% |  |  | start no earlier than 2011-04-25 | Prasad [75%] | 36h | 36h |
| 34 | 3.3 | packaging |  | 1d | 2011-05-12 A | 2011-05-12 A | 33 | 100% |  |  | start no earlier than 2011-05-12 | Prasad | 8h | 8h |
| 35 | 3.4 | QA (limited to Tomcat and mySQL) |  | 7d | 2011-05-13 A | 2011-05-23 A | 34 | 100% |  |  | start no earlier than 2011-05-04 | Aynur | 56h | 56h |
| 36 | 3.5 | Release activities |  | 2d? | 2011-05-24 A | 2011-05-25 A | 35 | 100% |  |  |  | Prasad | 16h | 16h |
| 37 | 3.6 | **Alternate distribution packages** |  | 10d | 2011-06-07 A | 2011-06-20 |  | 50% | 5d | 151d |  |  | 16h | 8h |
| 38 | 3.6.1 | Smoke-test GUI installer distribution |  | 4d | 2011-06-07 A | 2011-06-10 A |  | 100% |  |  | start no earlier than 2011-06-07 | Greg [25%] | 8h | 8h |
| 39 | 3.6.2 | Smoke-test upgrade distribution |  | 4d | 2011-06-15 | 2011-06-20 |  |  |  | 154d | start no earlier than 2011-06-15 | Greg [25%] | 8h |  |
| 42 | 4 | **Technology stack upgrade to 2010 "current" and "future"** |  | 67d? | 2011-05-13 A | 2011-08-17 |  | 27% | 48.83d? | 0d |  |  | 300h | 120h |
| 43 | 4.1 | CLM/LLT (base CLM only, CSM relies on CLM) |  | 1d | 2011-05-13 A | 2011-05-13 A |  | 100% |  |  | start no earlier than 2011-05-13 | Prasad | 8h | 8h |
| 44 | 4.2 | **CSM/UPT/CGMM** |  | 17d | 2011-05-16 A | 2011-06-08 A | 43 | 100% |  |  |  |  | 88h | 88h |
| 45 | 4.2.1 | JDK (migrate - done for a patch) |  | 1d | 2011-05-16 A | 2011-05-16 A |  | 100% |  |  | start no earlier than 2011-05-11 | Prasad | 8h | 8h |
| 46 | 4.2.2 | JBoss (migrate - done for a patch) |  | 1d | 2011-05-17 A | 2011-05-17 A | 45 | 100% |  |  |  | Prasad | 8h | 8h |
| 47 | 4.2.3 | UPT/Tomcat (migrate - in progress for a patch) |  | 1d | 2011-05-18 A | 2011-05-18 A | 46 | 100% |  |  |  | Prasad | 8h | 8h |
| 48 | 4.2.4 | Other |  | 2d | 2011-05-23 A | 2011-05-26 A | 47 | 100% |  |  | start no earlier than 2011-05-23 | Prasad | 16h | 16h |
| 49 | 4.2.5 | CGMM |  | 6d | 2011-06-01 A | 2011-06-08 A |  | 100% |  |  | start no earlier than 2011-06-01 | Prasad | 48h | 48h |
| 50 | 4.3 | CLM/LLT (LLT relies on CSM) |  | 2d | 2011-05-27 A | 2011-05-31 A | 44 | 100% |  |  |  | Prasad | 16h | 16h |
| 51 | 4.4 | XMI Handler |  | 4d | 2011-06-09 A | 2011-06-15 |  | 50% | 2d | 3d | start no earlier than 2011-06-09 | Prasad [50%] | 16h | 8h |
| 52 | 4.5 | **SDK** |  | 11d | 2011-06-21 | 2011-07-06 | 51 |  |  | 0d | start no earlier than 2011-06-20 |  | 68h |  |
| 53 | 4.5.1 | JDK |  | 1d | 2011-06-21 | 2011-06-21 |  |  |  | 0d | start no earlier than 2011-06-21 | Prasad | 8h |  |
| 54 | 4.5.2 | Jboss |  | 2d | 2011-06-22 | 2011-06-23 | 53 |  |  | 0d |  | Prasad [50%] | 8h |  |
| 55 | 4.5.3 | Spring |  | 3d | 2011-06-24 | 2011-06-28 | 54 |  |  | 0d |  | Prasad [50%] | 12h |  |
| 56 | 4.5.4 | Hibernate |  | 2d | 2011-06-29 | 2011-06-30 | 55 |  |  | 0d |  | Prasad | 16h |  |
| 57 | 4.5.5 | Other technologies |  | 3d | 2011-07-01 | 2011-07-06 | 56 |  |  | 0d |  | Prasad | 24h |  |
| 58 | 4.6 | SDK "future" - Spring |  | 1d? | 2011-07-07 | 2011-07-07 | 52 |  |  | 0d |  |  |  |  |
| 59 | 4.7 | SDK "future" - Hibernate (can be dropped if too many problems) |  | 1d? | 2011-07-08 | 2011-07-08 | 58 |  |  | 0d |  |  |  |  |
| 60 | 4.8 | CLM/LLT & CSM/UPT/CGMM "future" |  | 3d? | 2011-07-11 | 2011-07-13 | 59 |  |  | 0d | start no earlier than 2011-06-16 | Prasad | 24h |  |
| 61 | 4.9 | Workbench ("current" and "future") |  | 5d | 2011-07-14 | 2011-07-20 | 60 |  |  | 0d |  | Prasad | 40h |  |
| 62 | 4.10 | ISO 21090 ("current" and "future") |  | 5d | 2011-07-21 | 2011-07-27 | 61 |  |  | 0d |  | Prasad | 40h |  |
| 63 | 4.11 | (WebSSO?) | milestone | 0d | 2011-07-27 | 2011-07-27 | 62 |  |  | 0d |  |  |  |  |
| 64 | 4.12 | QA lag [assumes ongoing QA, not in plan yet] |  | 5d | 2011-07-28 | 2011-08-03 | 63 |  |  | 0d |  |  |  |  |
| 65 | 4.13 | Release activities |  | 10d | 2011-08-04 | 2011-08-17 | 64 |  |  | 0d |  |  |  |  |

| ID | WBS | Task | Duration | Start | Finish | Predecessors | Complete | Remaining | Total slack | Free slack | Constraint | Resources | Work | Actual work |
| --- | --- | --- | --- | --- | --- | --- | --- | --- | --- | --- | --- | --- | --- | --- |
| 68 | 5 | **UPT Improvement Plan** | 87d? | 2011-03-14 A | 2011-07-14 |  | 60% | 34.53d? | 22d |  |  |  | 56h | 50h |
| 69 | 5.1 | Analysis of existing trackers | 6d | 2011-03-14 A | 2011-03-21 A |  | 100% |  |  |  | start no earlier than 2011-03-14 | Prasad | 48h | 48h |
| 70 | 5.2 | Requirements gathering with NBIA | 20d? | 2011-03-28 A | 2011-04-22 A |  | 100% |  |  |  | start no earlier than 2011-03-28 |  |  |  |
| 71 | 5.3 | Draft project plan development (partial) | 2d | 2011-05-13 A | 2011-05-16 A | 69, 70FF | 100% |  |  |  | start no earlier than 2011-05-13 |  |  |  |
| 72 | 5.4 | Internal review of proposed features | 0.25d | 2011-05-27 A | 2011-05-27 A | 71 | 100% |  |  |  | start no earlier than 2011-05-27 |  |  |  |
| 73 | 5.5 | **Research on use of systems-hosted older versions** | 7d? | 2011-06-13 A | 2011-06-21 | 72 | 14% | 6d? | 26.75d |  |  |  | 4h | 2h |
| 74 | 5.5.1 | Formulate queries | 2d | 2011-06-13 A | 2011-06-14 |  | 50% | 1d | 26.75d | 0d | start no earlier than 2011-06-13 | Greg [25%] | 4h | 2h |
| 75 | 5.5.2 | Lead time and systems response (est.) | 5d? | 2011-06-15 | 2011-06-21 | 74 |  |  | 24.75d | 0d |  |  |  |  |
| 76 | 5.6 | Follow up review of proposed features | 0.25d | 2011-06-22 | 2011-06-22 | 75 |  |  | 26.25d | 0d | start no earlier than 2011-06-01 |  |  |  |
| 77 | 5.7 | Draft project plan (complete) | 2d | 2011-06-27 | 2011-06-28 | 76 |  |  | 22d | 0d | start no earlier than 2011-06-27 | Greg [25%] | 4h |  |
| 78 | 5.8 | Review plan with user representatives and amend | 10d? | 2011-06-29 | 2011-07-13 | 77 |  |  | 22d | 0d |  |  |  |  |
| 79 | 5.9 | Plan approval | 1d? | 2011-07-14 | 2011-07-14 | 78 |  |  | 22d |  |  |  |  |  |
| 82 | 6 | **UPT enhancements [changes expected]** | 110d | 2011-08-18 | 2012-01-19 | 68, 42 |  |  | 0d |  |  |  |  |  |
| 83 | 6.1 | GF 30436 Better LDAP integration when adding users to UPT | 5d | 2011-08-18 | 2011-08-24 |  |  |  | 0d |  |  |  |  |  |
| 84 | 6.2 | GF 22524 Authentication - DataSource LoginModule | 3d | 2011-08-25 | 2011-08-29 | 83 |  |  | 0d |  |  |  |  |  |
| 85 | 6.3 | GF 1158/2830 Implement paging for UPT | 10d | 2011-08-30 | 2011-09-13 | 84 |  |  | 0d |  |  |  |  |  |
| 86 | 6.4 | GF 22540/29002/30435 Password changes | 10d | 2011-09-14 | 2011-09-27 | 85 |  |  | 0d |  |  |  |  |  |
| 87 | 6.5 | GF 15527 CSM username field length should be increased to 100 characters | 1d | 2011-09-28 | 2011-09-28 | 86 |  |  | 0d |  |  |  |  |  |
| 88 | 6.6 | GF 19369 Indicate UPT /CSM version names in the Application Header after login | 2d | 2011-09-29 | 2011-09-30 | 87 |  |  | 0d |  |  |  |  |  |
| 89 | 6.7 | GF 631/22236 Password recovery | 5d | 2011-10-03 | 2011-10-07 | 88 |  |  | 0d |  |  |  |  |  |
| 90 | 6.8 | GF 30019 User lockout on unsuccessful logins | 5d | 2011-10-10 | 2011-10-14 | 89 |  |  | 0d |  |  |  |  |  |
| 91 | 6.9 | GF 2913 Add an Active Flag for users | 5d | 2011-10-17 | 2011-10-21 | 90 |  |  | 0d |  |  |  |  |  |
| 92 | 6.10 | GF 24404 UPT GUI installer should validate database connection info | 3d | 2011-10-24 | 2011-10-26 | 91 |  |  | 0d |  |  |  |  |  |
| 93 | 6.11 | GF 30372 Change UPT install.properties file to note properties that must be replaced | 1d | 2011-10-27 | 2011-10-27 | 92 |  |  | 0d |  |  |  |  |  |
| 94 | 6.12 | GF 1154/30433 Synchronization between UPT and supported application | 15d | 2011-10-28 | 2011-11-17 | 93 |  |  | 0d |  |  |  |  |  |
| 95 | 6.13 | GF 24965 Documentation changes from CDL installation | 1d | 2011-11-18 | 2011-11-18 | 94 |  |  | 0d |  |  |  |  |  |
| 96 | 6.14 | GF 24116 Need stronger access control | 10d | 2011-11-21 | 2011-12-02 | 95 |  |  | 0d |  |  |  |  |  |
| 97 | 6.15 | GF 2914 Auto-email new user or associated user | 4d | 2011-12-05 | 2011-12-08 | 96 |  |  | 0d |  |  |  |  |  |
| 98 | 6.16 | User friendly UPT UI | 15d | 2011-12-09 | 2011-12-29 | 97 |  |  | 0d |  |  |  |  |  |
| 99 | 6.17 | Customizable UPT UI | 15d | 2011-12-30 | 2012-01-19 | 98 |  |  | 0d |  |  |  |  |  |

| ID | WBS | Task | Type | Duration | Start | Finish | Predecessors | Complete | Remaining | Total slack | Free slack | Constraint | Resources | Work | Actual work |
| --- | --- | --- | --- | --- | --- | --- | --- | --- | --- | --- | --- | --- | --- | --- | --- |
| 102 | 7 | **Analysis** |  | 75d? | 2011-03-22 A | 2011-07-06 |  | 41% | 44.12d? | 140d |  |  |  | 172h | 98h |
| 103 | 7.1 | Eclipse/SDK comparison and gap analysis |  | 5d | 2011-03-22 A | 2011-03-28 A |  | 100% |  |  |  | start no earlier than 2011-03-22 | Prasad | 40h | 40h |
| 104 | 7.2 | User requirements/need for SDK (combined with Eclipse/SDK analysis) |  | 3d | 2011-04-15 A | 2011-04-19 A |  | 100% |  |  |  | start no earlier than 2011-04-15 | Prasad [75%] | 18h | 18h |
| 105 | 7.3 | caGrid with JBoss 5.1 |  | 3d | 2011-05-05 A | 2011-05-12 A |  | 100% |  |  |  | start no earlier than 2011-05-05 | Prasad | 24h | 24h |
| 106 | 7.4 | Ideal architecture for separation of SDK and caGrid |  | 4d | 2011-06-09 A | 2011-06-15 |  | 50% | 2d | 154d |  | start no earlier than 2011-06-09 | Prasad [50%] | 16h | 8h |
| 107 | 7.5 | Test Globus WSRF (caGrid) and JBoss 5.1 |  | 1d | 2011-06-13 A | 2011-06-13 A |  | 100% |  |  |  | start no earlier than 2011-06-13 | Prasad | 8h | 8h |
| 108 | 7.6 | Evaluate caTissue source with respect to potential use of SDK |  | 3d? | 2011-06-16 | 2011-06-20 |  |  |  | 151d |  | start no earlier than 2011-06-16 | Prasad | 24h |  |
| 109 | 7.7 | caTissue Jamboree |  | 3d | 2011-06-22 | 2011-06-24 |  |  |  | 147d |  | finish no earlier than 2011-06-24 | Prasad [50%]; Greg [25%] | 18h |  |
| 110 | 7.8 | Investigate problem with caGrid-flavored CQL and SDK 4.4 w/ ISO data types despite workaround |  | 12d | 2011-06-20 | 2011-07-06 |  |  |  | 140d |  | start no earlier than 2011-06-20 | Dan [25%] | 24h |  |
| 113 | 8 | **CSM bug fixes (code - no release specified)** |  | 6d | 2011-03-14 A | 2011-03-21 A |  | 100% |  |  |  |  |  | 48h | 48h |
| 114 | 8.1 | GF 29450 CSM – Users locked out due to invalid logins may be (effectively) locked out forever |  | 5d | 2011-03-14 A | 2011-03-18 A |  | 100% |  |  |  | start no earlier than 2011-03-14 | Vijay | 40h | 40h |
| 115 | 8.2 | GF 30372 CSM/UPT - Change UPT install.properties file to note properties that must be replaced |  | 1d | 2011-03-21 A | 2011-03-21 A |  | 100% |  |  |  | start no earlier than 2011-03-21 | Vijay | 8h | 8h |
| 118 | 9 | **SDK 4.1.3 - GF 27529 patch to 4.1.2 (for caBIO)** |  | 0d | 2011-03-14 A | 2011-03-14 |  |  | 0d | 221d |  |  |  |  |  |
| 119 | 9.1 | apply fix for GF 27529 to 4.1.2 [already done] | milestone | 0d | 2011-03-14 A | 2011-03-14 A |  | 100% |  |  |  | start no earlier than 2011-03-14 |  |  |  |
| 120 | 9.2 | QA [low priority] [deferred indefinitely] | milestone | 0d | 2011-03-14 | 2011-03-14 | 119 |  |  | 221d | 0d | start no earlier than 2011-02-17 |  |  |  |
| 121 | 9.3 | Gforge post [no longer applicable] | milestone | 0d | 2011-03-14 | 2011-03-14 | 120 |  |  | 221d |  |  |  |  |  |
| 124 | 10 | **General support to date (only large tasks called out)** |  | 63d | 2011-03-22 A | 2011-06-17 |  | 94% | 4d | 152d |  |  |  | 126h | 118h |
| 125 | 10.1 | General support through 6/3 |  | 53d | 2011-03-22 A | 2011-06-03 A |  | 100% |  |  |  | finish no earlier than 2011-06-03 | Dan [25%] | 106h | 106h |
| 126 | 10.2 | General support 6/6-6/10 |  | 5d | 2011-06-06 A | 2011-06-10 A |  | 100% |  |  |  | start no earlier than 2011-06-06 | Dan [25%] | 10h | 10h |
| 127 | 10.3 | General support 6/13-6/17 |  | 5d | 2011-06-13 A | 2011-06-17 |  | 20% | 4d | 152d |  | start no earlier than 2011-06-13 | Dan [25%] | 10h | 2h |
| 130 | 11 | **Project Management to date (only large tasks called out)** |  | 69d | 2011-03-14 A | 2011-06-17 |  | 94% | 4d | 152d |  |  |  | 256h | 248h |
| 131 | 11.1 | PM and misc work through 6/3 |  | 59d | 2011-03-14 A | 2011-06-03 A |  | 100% |  |  |  | finish no earlier than 2011-06-03 | Greg [50%] | 236h | 236h |
| 132 | 11.2 | General PM 6/6-6/10 |  | 5d | 2011-06-06 A | 2011-06-10 A |  | 100% |  |  |  | start no earlier than 2011-06-06 | Greg [25%] | 10h | 10h |
| 133 | 11.3 | General PM 6/13-6/17 |  | 5d | 2011-06-13 A | 2011-06-17 |  | 20% | 4d | 152d |  | start no earlier than 2011-06-13 | Greg [25%] | 10h | 2h |

| ID | WBS | Task | Duration | Start | Finish | Total slack | Constraint |
| --- | --- | --- | --- | --- | --- | --- | --- |
| 136 | 12 | **Other unplanned** | 1d? | 2011-01-13 | 2011-01-13 | 262d |  |
| 137 | 12.1 | 508 compliance review and plan | 1d? | 2011-01-13 | 2011-01-13 | 262d | start no earlier than 2011-01-13 |
| 138 | 12.2 | ECCF compliance review and plan | 1d? | 2011-01-13 | 2011-01-13 | 262d | start no earlier than 2011-01-13 |
| 139 | 12.3 | Effect of NCI CBIIT’s Enterprise Security Program on CSM | 1d? | 2011-01-13 | 2011-01-13 | 262d | start no earlier than 2011-01-13 |
| 140 | 12.4 | Effect of NCI CBIIT’s Enterprise Security Program on CLM | 1d? | 2011-01-13 | 2011-01-13 | 262d | start no earlier than 2011-01-13 |
